# FUFO Highl level plan

Schedule from MS Project, 2012-02-05 to 2012-08-21, A marks actual dates.
Grizli777

## Calendars

- Standard: Mon-Fri 08:00-12:00, 13:00-17:00; Sat-Sun off. Exceptions (off unless hours are given): 2012-02-05 08:00-12:00, 13:00-17:00.

## Resources

| Resource |
| --- |
| NguyenLK |
| PhongVM |
| YenTT |

## Schedule

| ID | WBS | Task | Duration | Start | Finish | Predecessors | Complete | Remaining | Total slack | Free slack | Constraint | Resources | Work | Actual work |
| --- | --- | --- | --- | --- | --- | --- | --- | --- | --- | --- | --- | --- | --- | --- |
| 1 | 1 | **Streaming video from phone to computer** | 69d | 2012-02-06 A | 2012-05-10 |  | 1% | 68.36d | 73d |  |  |  | 1000h | 8.4h |
| 2 | 1.1 | Make plan | 3d | 2012-02-06 A | 2012-02-08 |  | 35% | 1.95d | 76d | 0d | start no earlier than 2012-02-06 | NguyenLK | 24h | 8.4h |
| 3 | 1.2 | Review plan and improve | 2d | 2012-02-09 | 2012-02-10 | 2 |  |  | 76d | 0d |  | NguyenLK; PhongVM; YenTT | 48h |  |
| 4 | 1.3 | **Training and design for video sending** | 5d | 2012-02-13 | 2012-02-17 | 3 |  |  | 76d | 0d |  |  | 72h |  |
| 5 | 1.3.1 | **Make SRS** | 3d | 2012-02-13 | 2012-02-15 |  |  |  | 76d |  |  |  | 24h |  |
| 6 | 1.3.1.1 | Introduction | 0.5d | 2012-02-13 | 2012-02-13 |  |  |  | 76d | 0d |  | NguyenLK | 4h |  |
| 7 | 1.3.1.2 | Functional requirement | 2d | 2012-02-13 | 2012-02-15 | 6 |  |  | 76d | 0d |  | NguyenLK | 16h |  |
| 8 | 1.3.1.3 | Non-functional requirement | 0.5d | 2012-02-15 | 2012-02-15 | 7 |  |  | 76d | 0d |  | NguyenLK | 4h |  |
| 9 | 1.3.2 | Review SRS and improve | 2d | 2012-02-16 | 2012-02-17 | 8 |  |  | 76d |  |  | PhongVM; NguyenLK; YenTT | 48h |  |
| 10 | 1.4 | **Design** | 22d | 2012-02-20 | 2012-03-20 | 4 |  |  | 76d | 0d |  |  | 48h |  |
| 11 | 1.4.1 | **Make HLD** | 10d | 2012-02-20 | 2012-03-02 |  |  |  | 76d | 0d |  |  | 48h |  |
| 12 | 1.4.1.1 | Introduction | 0.5d | 2012-02-20 | 2012-02-20 |  |  |  | 83.5d | 0d |  |  |  |  |
| 13 | 1.4.1.2 | Wait for template | 10d | 2012-02-20 | 2012-03-02 |  |  |  | 76d |  |  |  |  |  |
| 14 | 1.4.1.3 | Review HLD and improve | 2d | 2012-02-20 | 2012-02-22 | 12 |  |  | 83.5d |  |  | NguyenLK; PhongVM; YenTT | 48h |  |
| 15 | 1.4.2 | Make DDD | 10d | 2012-03-05 | 2012-03-16 | 11 |  |  | 76d | 0d |  |  |  |  |
| 16 | 1.4.3 | Review DDD | 2d | 2012-03-19 | 2012-03-20 | 15 |  |  | 76d |  |  |  |  |  |
| 17 | 1.5 | **Coding** | 37d | 2012-03-21 | 2012-05-10 | 10 |  |  | 73d |  |  |  | 808h |  |
| 18 | 1.5.1 | Make general interface for sending and compressing video | 3d | 2012-03-21 | 2012-03-23 |  |  |  | 83d | 0d |  | NguyenLK; PhongVM; YenTT | 72h |  |
| 19 | 1.5.2 | **Send video over Internet** | 24d | 2012-03-26 | 2012-04-26 | 18 |  |  | 83d | 0d |  |  | 192h |  |
| 20 | 1.5.2.1 | Code recording video using back camera on Android | 4d | 2012-03-26 | 2012-03-29 |  |  |  | 83d | 0d |  | NguyenLK | 32h |  |
| 21 | 1.5.2.2 | Code send frame from phone to computer | 10d | 2012-03-30 | 2012-04-12 | 20 |  |  | 83d | 0d |  | NguyenLK | 80h |  |
| 22 | 1.5.2.3 | Code receive frame on computer | 10d | 2012-04-13 | 2012-04-26 | 21 |  |  | 83d |  |  | NguyenLK | 80h |  |
| 23 | 1.5.3 | **Use h263 and h264 on the video sending** | 24d | 2012-03-26 | 2012-04-26 | 19SS |  |  | 73d | 0d |  |  | 384h |  |
| 24 | 1.5.3.1 | Reasearch how to compress and decompress video frame using h263 and h264 | 7d | 2012-03-26 | 2012-04-03 |  |  |  | 73d | 0d |  | PhongVM; YenTT | 112h |  |
| 25 | 1.5.3.2 | Coding frame compressing function | 17d | 2012-04-04 | 2012-04-26 | 24 |  |  | 73d | 0d |  | PhongVM | 136h |  |
| 26 | 1.5.3.3 | Coding frame decompressing function | 17d | 2012-04-04 | 2012-04-26 | 25SS |  |  | 73d | 0d |  | YenTT | 136h |  |

| ID | WBS | Task | Duration | Start | Finish | Predecessors | Total slack | Free slack | Constraint | Resources | Work |
| --- | --- | --- | --- | --- | --- | --- | --- | --- | --- | --- | --- |
| 27 | 1.5.4 | **Improving video sending** | 10d | 2012-04-27 | 2012-05-10 | 23 | 73d |  |  | NguyenLK; PhongVM | 160h |
| 28 | 1.5.4.1 | Combine code to send compressed video frame and decomress video frame after sending | 10d | 2012-04-27 | 2012-05-10 | 26 | 73d |  |  |  |  |
| 29 | 2 | training and design for actuator | 23d | 2012-02-05 | 2012-03-06 |  | 0d |  | start no earlier than 2012-02-05 |  |  |
| 30 | 3 | making the first FUFO | 30d | 2012-03-07 | 2012-04-17 | 29 | 0d |  |  |  |  |
| 31 | 4 | implement and improve dynamic balancing | 90d? | 2012-04-18 | 2012-08-21 | 30 | 0d |  |  |  |  |
| 32 | 5 | make bluetooth connection | 30d | 2012-02-05 | 2012-03-15 |  | 53d | 0d | start no earlier than 2012-02-05 |  |  |
| 33 | 6 | TCP/IP control from computer to FUFO (web) | 60d | 2012-03-16 | 2012-06-07 | 32 | 53d |  |  |  |  |
