# FUFO Highl level plan

Schedule from MS Project, 2012-02-05 to 2012-08-21, A marks actual dates.
Grizli777

## Calendars

- Standard: Mon-Fri 08:00-12:00, 13:00-17:00; Sat-Sun off. Exceptions (off unless hours are given): 2012-02-05 08:00-12:00, 13:00-17:00.

## Resources

| Resource |
| --- |
| NguyenLK |
| PhongVM |
| YenTT |

## Schedule

| ID | WBS | Task | Duration | Start | Finish | Predecessors | Complete | Remaining | Total slack | Free slack | Constraint | Resources | Work | Actual work |
| --- | --- | --- | --- | --- | --- | --- | --- | --- | --- | --- | --- | --- | --- | --- |
| 1 | 1 | **Streaming video from phone to computer** | 69.5d | 2012-02-06 A | 2012-05-11 |  | 1% | 68.85d | 72.5d |  |  |  | 1420h | 8.4h |
| 2 | 1.1 | Make plan | 3d | 2012-02-06 A | 2012-02-08 |  | 35% | 1.95d | 76d | 0d | start no earlier than 2012-02-06 | NguyenLK | 24h | 8.4h |
| 3 | 1.2 | Review plan and improve | 2d | 2012-02-09 | 2012-02-10 | 2 |  |  | 76d | 0d |  | NguyenLK; PhongVM; YenTT | 48h |  |
| 4 | 1.3 | **Training and design for video sending** | 4.5d | 2012-02-13 | 2012-02-17 | 3 |  |  | 72.5d | 0d |  |  | 76h |  |
| 5 | 1.3.1 | **Make SRS** | 2.5d | 2012-02-13 | 2012-02-15 |  |  |  | 72.5d |  |  |  | 28h |  |
| 6 | 1.3.1.1 | Introduction | 0.5d | 2012-02-13 | 2012-02-13 |  |  |  | 76d | 0d |  | NguyenLK | 4h |  |
| 7 | 1.3.1.2 | Functional requirement | 2d | 2012-02-13 | 2012-02-15 | 6 |  |  | 76d | 0d |  | NguyenLK | 16h |  |
| 8 | 1.3.1.3 | Non-functional requirement | 1d | 2012-02-14 | 2012-02-15 | 7FF |  |  | 75.5d | 0d |  | YenTT | 8h |  |
| 9 | 1.3.2 | Review SRS and improve | 2d | 2012-02-15 | 2012-02-17 | 8 |  |  | 76.5d |  |  | PhongVM; NguyenLK; YenTT | 48h |  |
| 10 | 1.4 | **Design** | 23d | 2012-02-17 | 2012-03-21 | 4 |  |  | 72.5d | 0d |  |  | 384h |  |
| 11 | 1.4.1 | **Make HLD** | 9d | 2012-02-17 | 2012-03-01 |  |  |  | 72.5d |  |  |  | 80h |  |
| 12 | 1.4.1.1 | Introduction | 0.5d | 2012-02-17 | 2012-02-17 |  |  |  | 74.5d | 0d |  | NguyenLK | 4h |  |
| 13 | 1.4.1.2 | High level function description | 1.5d | 2012-02-20 | 2012-02-21 | 12 |  |  | 74.5d | 0d |  | NguyenLK | 12h |  |
| 14 | 1.4.1.3 | System architecture design | 3d | 2012-02-21 | 2012-02-24 | 13 |  |  | 74.5d | 0d |  | NguyenLK | 24h |  |
| 15 | 1.4.1.4 | Screen design | 1d | 2012-02-21 | 2012-02-22 | 14SS |  |  | 95.5d |  |  | YenTT | 8h |  |
| 16 | 1.4.1.5 | Application requirement | 1d | 2012-02-24 | 2012-02-27 | 14 |  |  | 75.5d | 0d |  | NguyenLK | 8h |  |
| 17 | 1.4.1.6 | Diagrams (activity,…) | 1d | 2012-02-27 | 2012-02-28 | 16 |  |  | 75.5d | 0d |  | NguyenLK | 8h |  |
| 18 | 1.4.1.7 | Interface | 2d | 2012-02-28 | 2012-03-01 | 17 |  |  | 75.5d | 0d |  | NguyenLK | 16h |  |
| 19 | 1.4.2 | Review HLD and improve | 2d | 2012-03-01 | 2012-03-05 | 18 |  |  | 75.5d | 0d |  | NguyenLK; PhongVM; YenTT | 48h |  |
| 20 | 1.4.3 | **Make DDD** | 10d | 2012-03-05 | 2012-03-19 | 19 |  |  | 72.5d |  |  |  | 208h |  |
| 21 | 1.4.3.1 | Function specification | 1d | 2012-03-05 | 2012-03-06 |  |  |  | 75.5d | 0d |  | NguyenLK | 8h |  |
| 22 | 1.4.3.2 | Sequence diagram for all functions | 3d | 2012-03-06 | 2012-03-09 | 21 |  |  | 75.5d | 0d |  | NguyenLK; PhongVM; YenTT | 72h |  |
| 23 | 1.4.3.3 | Class specification | 5d | 2012-03-09 | 2012-03-16 | 22 |  |  | 75.5d | 0d |  | NguyenLK; PhongVM; YenTT | 120h |  |
| 24 | 1.4.3.4 | Screen detail design | 1d | 2012-03-16 | 2012-03-19 | 23 |  |  | 75.5d | 0d |  | YenTT | 8h |  |
| 25 | 1.4.4 | Review DDD | 2d | 2012-03-19 | 2012-03-21 | 24 |  |  | 75.5d |  |  | NguyenLK; PhongVM; YenTT | 48h |  |

| ID | WBS | Task | Duration | Start | Finish | Predecessors | Total slack | Free slack | Constraint | Resources | Work |
| --- | --- | --- | --- | --- | --- | --- | --- | --- | --- | --- | --- |
| 26 | 1.5 | **Coding** | 34d | 2012-03-21 | 2012-05-08 | 10 | 72.5d | 0d |  |  | 816h |
| 27 | 1.5.1 | **Send video over Internet** | 24d | 2012-03-21 | 2012-04-24 |  | 82.5d | 0d |  |  | 192h |
| 28 | 1.5.1.1 | Code recording video using back camera on Android | 4d | 2012-03-21 | 2012-03-27 |  | 82.5d | 0d |  | NguyenLK | 32h |
| 29 | 1.5.1.2 | Code send frame from phone to computer | 10d | 2012-03-27 | 2012-04-10 | 28 | 82.5d | 0d |  | NguyenLK | 80h |
| 30 | 1.5.1.3 | Code receive frame on computer | 10d | 2012-04-10 | 2012-04-24 | 29 | 82.5d |  |  | NguyenLK | 80h |
| 31 | 1.5.2 | **Use h263 and h264 on the video sending** | 24d | 2012-03-21 | 2012-04-24 | 27SS | 72.5d | 0d |  |  | 384h |
| 32 | 1.5.2.1 | Reasearch how to compress and decompress video frame using h263 and h264 | 7d | 2012-03-21 | 2012-03-30 |  | 72.5d | 0d |  | PhongVM; YenTT | 112h |
| 33 | 1.5.2.2 | Coding frame compressing function | 17d | 2012-03-30 | 2012-04-24 | 32 | 72.5d | 0d |  | PhongVM | 136h |
| 34 | 1.5.2.3 | Coding frame decompressing function | 17d | 2012-03-30 | 2012-04-24 | 33SS | 72.5d | 0d |  | YenTT | 136h |
| 35 | 1.5.3 | **Improving video sending** | 10d | 2012-04-24 | 2012-05-08 | 31 | 72.5d |  |  |  | 240h |
| 36 | 1.5.3.1 | Combine code to send compressed video frame and decomress video frame after sending | 10d | 2012-04-24 | 2012-05-08 | 34 | 72.5d |  |  | NguyenLK; PhongVM; YenTT | 240h |
| 37 | 1.6 | Testing | 3d | 2012-05-08 | 2012-05-11 | 26 | 72.5d |  |  | NguyenLK; PhongVM; YenTT | 72h |
| 38 | 2 | training and design for actuator | 23d | 2012-02-05 | 2012-03-06 |  | 0d |  | start no earlier than 2012-02-05 |  |  |
| 39 | 3 | making the first FUFO | 30d | 2012-03-07 | 2012-04-17 | 38 | 0d |  |  |  |  |
| 40 | 4 | implement and improve dynamic balancing | 90d? | 2012-04-18 | 2012-08-21 | 39 | 0d |  |  |  |  |
| 41 | 5 | make bluetooth connection | 30d | 2012-02-05 | 2012-03-15 |  | 53d | 0d | start no earlier than 2012-02-05 |  |  |
| 42 | 6 | TCP/IP control from computer to FUFO (web) | 60d | 2012-03-16 | 2012-06-07 | 41 | 53d |  |  |  |  |
